# Gantt AY Contingencia 2

Schedule from MS Project, 2015-04-12 to 2016-02-03, status date 2015-06-07, 24 hours a day, A marks actual dates.

## Calendars

- AsociateYa: Mon-Fri 09:00-13:00, 15:00-19:00; Sat-Sun off.
- AsociateYaContingencia: Mon-Fri 09:00-13:00, 15:00-19:00; Sat-Sun off.

## Resources

| Resource | Group |
| --- | --- |
| Tiberti-ANALISTA FUNCIONAL | ANALISTA FUNCIONAL |
| Budic-PROJECT MANAGER | PROJECT MANAGER |
| Tiberti-ADMINISTRADOR DE BASE DE DATOS | ADMINISTRADOR DE BASE DE DATOS |
| Tiberti-DESAROLLADOR | DESAROLLADOR |
| Budic-TESTER | TESTER |
| Croci-DISEÑADOR DE EXPERIENCIA DE USUARIO | DISEÑADOR DE EXPERIENCIA DE USUARIO |
| Rodriguez-ARQUITECTO DE SOFTWARE | ARQUITECTO DE SOFTWARE |
| Tiberti-ADMINISTRADOR DEL ENTORNO DE DESARROLLO | ADMINISTRADOR DEL ENTORNO DE DESARROLLO |
| Croci-DESAROLLADOR | DESAROLLADOR |
| Budic-DESAROLLADOR | DESAROLLADOR |
| Rodriguez-DESAROLLADOR | DESAROLLADOR |
| Budic-ANALISTA FUNCIONAL | ANALISTA FUNCIONAL |
| Rodriguez-PROJECT CONTROLLER | PROJECT CONTROLLER |
| Tiberti-TESTER | TESTER |
| Tiberti-ANALISTA LEGAL | ANALISTA LEGAL |

## Schedule

| ID | WBS | Task | Duration | Start | Finish | Predecessors | Complete | Calendar | Resources | Work | Actual work |
| --- | --- | --- | --- | --- | --- | --- | --- | --- | --- | --- | --- |
| 1 | 1 | **Análisis** | 3.29d | 2015-04-12 A | 2015-06-07 A |  | 100% |  |  | 127h | 127h |
| 2 | 1.1 | **Riesgos** | 0.71d | 2015-04-12 A | 2015-04-25 A |  | 100% |  |  | 39h | 39h |
| 3 | 1.1.1 | Identificar los riegos | 2h | 2015-04-12 A | 2015-04-12 A |  | 100% |  | Budic-PROJECT MANAGER; Tiberti-ADMINISTRADOR DE BASE DE DATOS; Rodriguez-ARQUITECTO DE SOFTWARE; Rodriguez-PROJECT CONTROLLER; Budic-ANALISTA FUNCIONAL; Croci-DESAROLLADOR | 11h | 11h |
| 4 | 1.1.2 | Analizar los riegos | 3h | 2015-04-12 A | 2015-04-18 A | 3 | 100% |  | Budic-PROJECT MANAGER; Tiberti-ADMINISTRADOR DE BASE DE DATOS; Rodriguez-ARQUITECTO DE SOFTWARE; Rodriguez-PROJECT CONTROLLER; Budic-ANALISTA FUNCIONAL; Croci-DESAROLLADOR | 12h | 12h |
| 5 | 1.1.3 | Planificación de riesgos | 6h | 2015-04-18 A | 2015-04-25 A | 4 | 100% |  | Budic-PROJECT MANAGER; Rodriguez-PROJECT CONTROLLER; Budic-ANALISTA FUNCIONAL | 14h | 14h |
| 6 | 1.1.4 | Completar tabla de riesgos | 1h | 2015-04-25 A | 2015-04-25 A | 5 | 100% |  | Budic-PROJECT MANAGER; Rodriguez-PROJECT CONTROLLER | 2h | 2h |
| 7 | 1.2 | **Planificación** | 1.62d | 2015-05-02 A | 2015-05-30 A |  | 100% |  |  | 57h | 57h |
| 8 | 1.2.1 | Identificar las tareas para cada entregable | 8h | 2015-05-02 A | 2015-05-10 A | 21 | 100% |  | Budic-PROJECT MANAGER | 8h | 8h |
| 9 | 1.2.2 | Definir las precedencias | 4h | 2015-05-10 A | 2015-05-16 A | 8 | 100% |  | Budic-PROJECT MANAGER | 4h | 4h |
| 10 | 1.2.3 | Estimar los tiempos de cada tarea | 6h | 2015-05-16 A | 2015-05-17 A | 9 | 100% |  | Budic-PROJECT MANAGER; Tiberti-ADMINISTRADOR DE BASE DE DATOS; Tiberti-ADMINISTRADOR DEL ENTORNO DE DESARROLLO; Tiberti-ANALISTA FUNCIONAL; Rodriguez-ARQUITECTO DE SOFTWARE; Budic-TESTER; Croci-DISEÑADOR DE EXPERIENCIA DE USUARIO | 17h | 17h |
| 11 | 1.2.4 | Calcular el camino crítico | 3h | 2015-05-30 A | 2015-05-30 A | 12 | 100% |  | Rodriguez-PROJECT CONTROLLER | 3h | 3h |
| 12 | 1.2.5 | Realizar diagrama de Gantt | 25h | 2015-05-17 A | 2015-05-26 A | 10 | 100% | AsociateYaContingencia | Rodriguez-PROJECT CONTROLLER | 25h | 25h |
| 13 | 1.3 | **Roles y Responsabilidades** | 0.21d | 2015-05-30 A | 2015-05-31 A |  | 100% |  |  | 7h | 7h |
| 14 | 1.3.1 | Identificar roles | 2h | 2015-05-30 A | 2015-05-30 A | 12 | 100% |  | Budic-PROJECT MANAGER; Tiberti-ANALISTA FUNCIONAL | 4h | 4h |
| 15 | 1.3.2 | Asignar responsabilidades a los roles | 3h | 2015-05-30 A | 2015-05-31 A | 14 | 100% |  | Budic-PROJECT MANAGER | 3h | 3h |
| 16 | 1.4 | **Habilidades y Competencias** | 0.35d | 2015-05-31 A | 2015-06-07 A |  | 100% |  |  | 6h | 6h |
| 17 | 1.4.1 | Asignar competencias a los roles | 6h | 2015-05-31 A | 2015-06-07 A | 15 | 100% |  | Budic-PROJECT MANAGER | 6h | 6h |
| 18 | 1.5 | **Comunicación** | 0.08d | 2015-06-07 A | 2015-06-07 A |  | 100% |  |  | 2h | 2h |
| 19 | 1.5.1 | Establecer canales de comunicación entre roles | 2h | 2015-06-07 A | 2015-06-07 A | 17 | 100% |  | Budic-PROJECT MANAGER | 2h | 2h |
| 20 | 1.6 | **WBS** | 0.44d | 2015-04-25 A | 2015-05-02 A |  | 100% |  |  | 16h | 16h |
| 21 | 1.6.1 | Definir entregables | 8h | 2015-04-25 A | 2015-05-02 A | 6 | 100% |  | Budic-PROJECT MANAGER; Tiberti-ANALISTA FUNCIONAL | 16h | 16h |
| 22 | 2 | **Diseño** | 7.12d | 2015-05-10 A | 2015-09-13 A |  | 100% |  |  | 203h | 203h |
| 23 | 2.1 | **Casos de Uso** | 4.94d | 2015-05-31 A | 2015-08-29 A |  | 100% |  |  | 110h | 110h |
| 24 | 2.1.1 | Identificar actores y funcionalidades | 25h | 2015-05-31 A | 2015-06-27 A | 21, 13 | 100% |  | Tiberti-ANALISTA FUNCIONAL; Budic-ANALISTA FUNCIONAL | 50h | 50h |
| 25 | 2.1.2 | Describir casos de uso | 48h | 2015-06-27 A | 2015-08-15 A | 24 | 100% |  | Tiberti-ANALISTA FUNCIONAL; Budic-PROJECT MANAGER | 50h | 50h |
| 26 | 2.1.3 | Describir las relaciones entre los actores y casos de uso | 9h | 2015-08-15 A | 2015-08-29 A | 24, 25 | 100% |  | Tiberti-ANALISTA FUNCIONAL; Budic-ANALISTA FUNCIONAL | 10h | 10h |

| ID | WBS | Task | Type | Duration | Start | Finish | Predecessors | Complete | Remaining | Total slack | Free slack | Resources | Work | Actual work |
| --- | --- | --- | --- | --- | --- | --- | --- | --- | --- | --- | --- | --- | --- | --- |
| 27 | 2.2 | **DER** |  | 2.77d | 2015-06-27 A | 2015-08-15 A |  | 100% |  |  |  |  | 38h | 38h |
| 28 | 2.2.1 | Definir entidades y sus atributos |  | 8h | 2015-06-27 A | 2015-07-04 A | 24 | 100% |  |  |  | Tiberti-ADMINISTRADOR DE BASE DE DATOS; Tiberti-ANALISTA FUNCIONAL; Rodriguez-ARQUITECTO DE SOFTWARE; Budic-PROJECT MANAGER | 24h | 24h |
| 29 | 2.2.2 | Describir las relaciones entre las entidades |  | 8h | 2015-07-05 A | 2015-08-08 A | 28 | 100% |  |  |  | Tiberti-ADMINISTRADOR DE BASE DE DATOS; Tiberti-ANALISTA FUNCIONAL | 8h | 8h |
| 30 | 2.2.3 | Normalizar DER |  | 6h | 2015-08-09 A | 2015-08-15 A | 29 | 100% |  |  |  | Tiberti-ADMINISTRADOR DE BASE DE DATOS | 6h | 6h |
| 31 | 2.3 | **Maqueta del Front-End** |  | 0.52d | 2015-08-15 A | 2015-08-23 A |  | 100% |  |  |  |  | 10h | 10h |
| 32 | 2.3.1 | Diseñar disposición de elementos estéticamente |  | 10h | 2015-08-15 A | 2015-08-23 A | 30 | 100% |  |  |  | Croci-DISEÑADOR DE EXPERIENCIA DE USUARIO | 10h | 10h |
| 33 | 2.4 | **Documento De Arquitectura** |  | 0.44d | 2015-05-10 A | 2015-05-17 A |  | 100% |  |  |  |  | 8h | 8h |
| 34 | 2.4.1 | Definir arquitectura de software |  | 8h | 2015-05-10 A | 2015-05-17 A | 8 | 100% |  |  |  | Rodriguez-ARQUITECTO DE SOFTWARE | 8h | 8h |
| 35 | 2.5 | **Especificación de la BD** |  | 0.92d | 2015-08-29 A | 2015-09-13 A |  | 100% |  |  |  |  | 37h | 37h |
| 36 | 2.5.1 | Diseño de tablas de la BD |  | 6h | 2015-08-29 A | 2015-08-30 A | 30, 26 | 100% |  |  |  | Tiberti-ADMINISTRADOR DE BASE DE DATOS; Tiberti-ANALISTA FUNCIONAL; Rodriguez-ARQUITECTO DE SOFTWARE | 18h | 18h |
| 37 | 2.5.2 | Definir tipo y volumen de datos |  | 3h | 2015-09-05 A | 2015-09-06 A | 38 | 100% |  |  |  | Tiberti-ADMINISTRADOR DE BASE DE DATOS | 3h | 3h |
| 38 | 2.5.3 | Relaciones entre las tablas de la BD |  | 3h | 2015-08-30 A | 2015-09-05 A | 36 | 100% |  |  |  | Tiberti-ADMINISTRADOR DE BASE DE DATOS | 3h | 3h |
| 39 | 2.5.4 | Definir políticas de seguridad e integridad |  | 5h | 2015-09-06 A | 2015-09-13 A | 37 | 100% |  |  |  | Tiberti-ADMINISTRADOR DE BASE DE DATOS; Tiberti-ANALISTA FUNCIONAL; Rodriguez-ARQUITECTO DE SOFTWARE | 13h | 13h |
| 40 | 3 | **Desarrollo** |  | 9.77d? | 2015-05-17 A | 2015-11-07 |  | 96% | 0.37d? | 0.08d |  |  | 903h | 870.5h |
| 41 | 3.1 | **Capacitacion** |  | 6.21d? | 2015-05-17 A | 2015-09-05 A |  | 100% |  |  |  |  | 290h | 290h |
| 42 | 3.1.1 | Inicio Capacitación en HTML |  | 10h | 2015-05-17 A | 2015-05-30 A | 34 | 100% |  |  |  | Budic-DESAROLLADOR | 10h | 10h |
| 43 | 3.1.2 | Inicio Capacitación en JavaScript | inactive | 20h | 2015-05-17 | 2015-06-07 | 34 |  |  | -8.94d | 0d | Croci-DESAROLLADOR | 20h |  |
| 44 | 3.1.3 | Inicio Capacitación en CSS |  | 10h | 2015-05-17 A | 2015-05-30 A | 34 | 100% |  |  |  | Budic-DESAROLLADOR | 10h | 10h |
| 45 | 3.1.4 | Inicio Capacitación en PHP |  | 20h | 2015-05-17 A | 2015-06-07 A | 34 | 100% |  |  |  | Rodriguez-DESAROLLADOR; Croci-DESAROLLADOR | 40h | 40h |
| 46 | 3.1.5 | Capacitación en HTML |  | 20h | 2015-05-30 A | 2015-07-19 A | 42 | 100% |  |  |  | Budic-DESAROLLADOR | 20h | 20h |
| 47 | 3.1.6 | Capacitación en Java | inactive | 10h | 2015-06-07 | 2015-06-14 | 43 |  |  | 8.75d |  | Croci-DESAROLLADOR | 10h |  |
| 48 | 3.1.7 | Capacitación en CSS |  | 20h | 2015-05-30 A | 2015-06-27 A | 44 | 100% |  |  |  | Budic-DESAROLLADOR | 20h | 20h |
| 49 | 3.1.8 | Capacitación en PHP |  | 70h | 2015-06-07 A | 2015-09-05 A | 45 | 100% |  |  |  | Rodriguez-DESAROLLADOR | 70h | 70h |
| 50 | 3.1.9 | Capacitacion Symfony |  | 61.97h? | 2015-06-07 A | 2015-08-23 A | 42, 43, 44, 45 | 100% |  |  |  | Budic-DESAROLLADOR; Croci-DESAROLLADOR; Rodriguez-DESAROLLADOR; Tiberti-DESAROLLADOR | 120h | 120h |

| ID | WBS | Task | Type | Duration | Start | Finish | Predecessors | Complete | Total slack | Free slack | Calendar | Resources | Work | Actual work |
| --- | --- | --- | --- | --- | --- | --- | --- | --- | --- | --- | --- | --- | --- | --- |
| 51 | 3.2 | **Escribir código de Plantillas** |  | 8.08d? | 2015-05-30 A | 2015-10-18 A |  | 100% |  |  |  |  | 101h | 101h |
| 52 | 3.2.1 | Inscribirse al portal |  | 10h? | 2015-05-30 A | 2015-06-13 A | 42, 44 | 100% |  |  |  | Budic-DESAROLLADOR; Croci-DESAROLLADOR | 10h | 10h |
| 53 | 3.2.2 | Autenticarse como usuario |  | 10h? | 2015-06-13 A | 2015-07-12 A | 52 | 100% |  |  |  | Budic-DESAROLLADOR; Croci-DESAROLLADOR | 10h | 10h |
| 54 | 3.2.3 | Modificar Usuario |  | 8h? | 2015-07-12 A | 2015-07-19 A | 53 | 100% |  |  |  | Budic-DESAROLLADOR; Croci-DESAROLLADOR | 10h | 10h |
| 55 | 3.2.4 | Dar de baja Usuario |  | 6h? | 2015-07-19 A | 2015-07-26 A | 54 | 100% |  |  |  | Budic-DESAROLLADOR; Croci-DESAROLLADOR | 6h | 6h |
| 56 | 3.2.5 | Inscribirse como emprendedor |  | 7h? | 2015-08-09 A | 2015-08-16 A | 139 | 100% |  |  |  | Budic-DESAROLLADOR; Croci-DESAROLLADOR | 7h | 7h |
| 57 | 3.2.6 | Aprobar inscripción como emprendedor |  | 5h? | 2015-08-16 A | 2015-09-05 A | 56 | 100% |  |  |  | Budic-DESAROLLADOR; Croci-DESAROLLADOR | 5h | 5h |
| 58 | 3.2.7 | Aplicar para crear emprendimiento |  | 5h? | 2015-09-05 A | 2015-09-06 A | 57 | 100% |  |  |  | Budic-DESAROLLADOR; Croci-DESAROLLADOR | 5h | 5h |
| 59 | 3.2.8 | Aprobar emprendimiento |  | 5.03h? | 2015-09-06 A | 2015-09-08 A | 58 | 100% |  |  | AsociateYaContingencia | Budic-DESAROLLADOR; Croci-DESAROLLADOR | 6h | 6h |
| 60 | 3.2.9 | Modificar emprendimiento | inactive | 10h? | 2015-09-08 | 2015-09-17 | 59 |  | 7.57d |  | AsociateYaContingencia | Budic-DESAROLLADOR | 10h |  |
| 61 | 3.2.10 | Buscar/filtrar emprendimientos |  | 5h? | 2015-09-08 A | 2015-09-12 A | 59 | 100% |  |  | AsociateYaContingencia | Budic-DESAROLLADOR; Croci-DESAROLLADOR | 5h | 5h |
| 62 | 3.2.11 | Aprobar baja de emprendimiento | inactive | 10h? | 2015-09-26 | 2015-09-27 | 140 |  | 6.09d |  | AsociateYaContingencia | Budic-DESAROLLADOR | 10h |  |
| 63 | 3.2.12 | Responder a inversor |  | 3h? | 2015-09-26 A | 2015-09-26 A | 140 | 100% |  |  | AsociateYaContingencia | Budic-DESAROLLADOR | 3h | 3h |
| 64 | 3.2.13 | Asociacion a emprendimiento |  | 4h? | 2015-09-26 A | 2015-09-27 A | 63 | 100% |  |  | AsociateYaContingencia | Budic-DESAROLLADOR | 4h | 4h |
| 65 | 3.2.14 | Consultar información a emprendedor |  | 8h? | 2015-09-27 A | 2015-10-10 A | 64 | 100% |  |  | AsociateYaContingencia | Budic-DESAROLLADOR; Croci-DESAROLLADOR | 8h | 8h |
| 66 | 3.2.15 | Realizar Pago |  | 6h? | 2015-10-10 A | 2015-10-11 A | 65 | 100% |  |  | AsociateYaContingencia | Budic-DESAROLLADOR; Croci-DESAROLLADOR | 8h | 8h |
| 67 | 3.2.16 | Dar de baja emprendimiento (baja manual) |  | 6h? | 2015-10-11 A | 2015-10-17 A | 66 | 100% |  |  | AsociateYaContingencia | Budic-DESAROLLADOR; Croci-DESAROLLADOR | 8h | 8h |
| 68 | 3.2.17 | Presentar estado de resultados | inactive | 10h? | 2015-10-18 | 2015-10-22 | 141 |  | 3.02d | 0d | AsociateYaContingencia | Budic-DESAROLLADOR | 10h |  |
| 69 | 3.2.18 | Promocionar estado de resultados | inactive | 10h? | 2015-10-22 | 2015-10-25 | 68 |  | 3.02d |  | AsociateYaContingencia | Budic-DESAROLLADOR | 10h |  |
| 70 | 3.2.19 | Cancelar emprendimiento (baja por tiempo) |  | 6h? | 2015-10-17 A | 2015-10-18 A | 67 | 100% |  |  | AsociateYaContingencia | Budic-DESAROLLADOR | 6h | 6h |
| 71 | 3.2.20 | Promocionar emprendimiento | inactive | 10h? | 2015-10-18 | 2015-10-23 | 70 |  | 3.23d | 0d | AsociateYaContingencia | Budic-DESAROLLADOR | 10h |  |
| 72 | 3.2.21 | Difundir Mail | inactive | 4h? | 2015-10-23 | 2015-10-24 | 71 |  | 3.23d |  | AsociateYaContingencia | Budic-DESAROLLADOR | 4h |  |
| 73 | 3.3 | **Escribir código JavaScript** | inactive | 19.44d? | 2015-06-07 | 2016-02-03 |  |  | -10.06d | 0d |  |  | 200h |  |
| 74 | 3.3.1 | Inscribirse al portal | inactive | 15h? | 2015-06-07 | 2015-06-21 | 43 |  | -8.94d | 0d |  | Croci-DESAROLLADOR | 15h |  |
| 75 | 3.3.2 | Autenticarse como usuario | inactive | 15h? | 2015-06-21 | 2015-07-25 | 74 |  | -9d | 0d |  | Croci-DESAROLLADOR | 15h |  |
| 76 | 3.3.3 | Modificar Usuario | inactive | 10h? | 2015-07-25 | 2015-08-02 | 75 |  | -9d | 0d |  | Croci-DESAROLLADOR | 10h |  |
| 77 | 3.3.4 | Dar de baja Usuario | inactive | 10h? | 2015-08-02 | 2015-08-15 | 76 |  | -9d | 0d |  | Croci-DESAROLLADOR | 10h |  |
| 78 | 3.3.5 | Inscribirse como emprendedor | inactive | 15h? | 2015-09-12 | 2015-11-14 | 144 |  | -9d | 0d |  | Croci-DESAROLLADOR | 15h |  |
| 79 | 3.3.6 | Aprobar inscripción como emprendedor | inactive | 10h? | 2015-11-14 | 2015-11-22 | 78 |  | -9d | 0d |  | Croci-DESAROLLADOR | 10h |  |
| 80 | 3.3.7 | Aplicar para crear emprendimiento | inactive | 10h? | 2015-11-22 | 2015-11-29 | 79 |  | -9d | 0d |  | Croci-DESAROLLADOR | 10h |  |
| 81 | 3.3.8 | Aprobar emprendimiento | inactive | 15h? | 2015-11-29 | 2016-01-05 | 80 |  | -8.89d | 0d |  | Croci-DESAROLLADOR | 15h |  |
| 82 | 3.3.9 | Modificar emprendimiento | inactive | 10h? | 2016-01-05 | 2016-01-07 | 81 |  | -8.67d | 0d |  | Croci-DESAROLLADOR | 10h |  |
| 83 | 3.3.10 | Dar de baja emprendimiento | inactive | 10h? | 2016-01-07 | 2016-01-08 | 82 |  | -8.46d | 0d |  | Croci-DESAROLLADOR | 10h |  |
| 84 | 3.3.11 | Aprobar baja de emprendimiento | inactive | 10h? | 2016-01-14 | 2016-01-18 | 145 |  | -12.85d | 0d | AsociateYaContingencia | Croci-DESAROLLADOR | 10h |  |
| 85 | 3.3.12 | Responder a inversor | inactive | 10h? | 2016-01-18 | 2016-01-19 | 84 |  | -12.85d | 0d | AsociateYaContingencia | Croci-DESAROLLADOR | 10h |  |
| 86 | 3.3.13 | Asociacion a emprendimiento | inactive | 10h? | 2016-01-19 | 2016-01-21 | 85 |  | -12.85d | 0d | AsociateYaContingencia | Croci-DESAROLLADOR | 10h |  |
| 87 | 3.3.14 | Consultar información a emprendedor | inactive | 10h? | 2016-01-21 | 2016-01-25 | 86 |  | -12.85d | 0d | AsociateYaContingencia | Croci-DESAROLLADOR | 10h |  |
| 88 | 3.3.15 | Buscar/filtrar emprendimientos | inactive | 10h? | 2016-01-25 | 2016-01-27 | 87 |  | -12.85d | 0d | AsociateYaContingencia | Croci-DESAROLLADOR | 10h |  |
| 89 | 3.3.16 | Realizar Pago | inactive | 10h? | 2016-01-27 | 2016-01-28 | 88 |  | -12.85d | 0d | AsociateYaContingencia | Croci-DESAROLLADOR | 10h |  |
| 90 | 3.3.17 | Presentar estado de resultados | inactive | 2h? | 2016-01-29 | 2016-01-29 | 146 |  | -12.85d | 0d | AsociateYaContingencia | Croci-DESAROLLADOR | 2h |  |
| 91 | 3.3.18 | Promocionar estado de Resultados | inactive | 3h? | 2016-01-29 | 2016-02-01 | 90 |  | -12.85d | 0d | AsociateYaContingencia | Croci-DESAROLLADOR | 3h |  |
| 92 | 3.3.19 | Cancelar proyecto (manualmente y por finalizacion) | inactive | 5h? | 2016-02-01 | 2016-02-01 | 91 |  | -12.85d | 0d | AsociateYaContingencia | Croci-DESAROLLADOR | 5h |  |
| 93 | 3.3.20 | Promocionar emprendimiento | inactive | 5h? | 2016-02-01 | 2016-02-02 | 92 |  | -12.85d | 0d | AsociateYaContingencia | Croci-DESAROLLADOR | 5h |  |
| 94 | 3.3.21 | Difundir mail | inactive | 5h? | 2016-02-02 | 2016-02-03 | 93 |  | -12.64d | 0d | AsociateYaContingencia | Croci-DESAROLLADOR | 5h |  |

| ID | WBS | Task | Type | Duration | Start | Finish | Predecessors | Complete | Remaining | Total slack | Free slack | Calendar | Resources | Work | Actual work |
| --- | --- | --- | --- | --- | --- | --- | --- | --- | --- | --- | --- | --- | --- | --- | --- |
| 95 | 3.4 | **Escribir código PHP** |  | 8.56d? | 2015-06-07 A | 2015-11-06 |  | 90% | 0.86d? | 0.1d |  |  |  | 296h | 271.5h |
| 96 | 3.4.1 | Inscribirse al portal |  | 20h? | 2015-06-07 A | 2015-06-27 A | 45 | 100% |  |  |  |  | Croci-DESAROLLADOR; Rodriguez-DESAROLLADOR | 24h | 24h |
| 97 | 3.4.2 | Autenticarse como usuario |  | 15h? | 2015-07-04 A | 2015-07-18 A | 154 | 100% |  |  |  |  | Croci-DESAROLLADOR; Rodriguez-DESAROLLADOR | 18h | 18h |
| 98 | 3.4.3 | Modificar Usuario |  | 10h? | 2015-07-18 A | 2015-07-26 A | 97 | 100% |  |  |  |  | Croci-DESAROLLADOR; Rodriguez-DESAROLLADOR | 12h | 12h |
| 99 | 3.4.4 | Dar de baja Usuario |  | 10h? | 2015-07-26 A | 2015-08-08 A | 98 | 100% |  |  |  |  | Croci-DESAROLLADOR; Rodriguez-DESAROLLADOR | 12h | 12h |
| 100 | 3.4.5 | Inscribirse como emprendedor |  | 10h? | 2015-08-08 A | 2015-08-16 A | 99 | 100% |  |  |  |  | Croci-DESAROLLADOR; Rodriguez-DESAROLLADOR | 12h | 12h |
| 101 | 3.4.6 | Aprobar inscripción como emprendedor |  | 10h? | 2015-08-16 A | 2015-08-23 A | 100 | 100% |  |  |  |  | Croci-DESAROLLADOR; Rodriguez-DESAROLLADOR | 12h | 12h |
| 102 | 3.4.7 | Aplicar para crear emprendimiento |  | 10h? | 2015-08-23 A | 2015-09-05 A | 101 | 100% |  |  |  |  | Croci-DESAROLLADOR; Rodriguez-DESAROLLADOR | 12h | 12h |
| 103 | 3.4.8 | Aprobar emprendimiento |  | 8h? | 2015-09-12 A | 2015-09-13 A | 155 | 100% |  |  |  | AsociateYaContingencia | Croci-DESAROLLADOR; Rodriguez-DESAROLLADOR | 10h | 10h |
| 104 | 3.4.9 | Modificar emprendimiento | inactive | 7.5h? | 2015-09-13 | 2015-09-17 | 103 |  |  | 7.58d |  | AsociateYaContingencia | Croci-DESAROLLADOR; Rodriguez-DESAROLLADOR | 15h |  |
| 105 | 3.4.10 | Buscar/filtrar emprendimientos |  | 10h? | 2015-09-13 A | 2015-09-19 A | 103 | 100% |  |  |  | AsociateYaContingencia | Croci-DESAROLLADOR; Rodriguez-DESAROLLADOR | 13h | 13h |
| 106 | 3.4.11 | Aprobar baja de emprendimiento | inactive | 7.5h? | 2015-09-19 | 2015-09-20 | 105 |  |  | 7.17d |  | AsociateYaContingencia | Croci-DESAROLLADOR; Rodriguez-DESAROLLADOR | 15h |  |
| 107 | 3.4.12 | Responder a inversor |  | 8h? | 2015-09-19 A | 2015-09-20 A | 105 | 100% |  |  |  | AsociateYaContingencia | Croci-DESAROLLADOR; Rodriguez-DESAROLLADOR | 10h | 10h |
| 108 | 3.4.13 | Asociar a emprendimiento |  | 15h? | 2015-09-20 A | 2015-09-26 A | 107 | 100% |  |  |  | AsociateYaContingencia | Croci-DESAROLLADOR; Rodriguez-DESAROLLADOR | 25h | 25h |
| 109 | 3.4.14 | Consultar información a emprendedor |  | 10h? | 2015-09-27 A | 2015-10-03 A | 156 | 100% |  |  |  | AsociateYaContingencia | Croci-DESAROLLADOR; Rodriguez-DESAROLLADOR | 13h | 13h |
| 110 | 3.4.15 | Realizar Pago |  | 42.01h? | 2015-10-03 A | 2015-10-17 A | 109 | 100% |  |  |  | AsociateYaContingencia | Croci-DESAROLLADOR; Rodriguez-DESAROLLADOR | 62h | 62h |
| 111 | 3.4.16 | Dar de baja empremdimiento (baja manual) |  | 20h? | 2015-10-17 A | 2015-10-24 A | 110 | 100% |  |  |  | AsociateYaContingencia | Croci-DESAROLLADOR; Rodriguez-DESAROLLADOR | 24h | 24h |
| 112 | 3.4.17 | Cancelar emprendimiento (baja por tiempo) |  | 24.99h? | 2015-10-24 A | 2015-11-01 | 111 | 50% | 12.49h? | 0.21d | 0d | AsociateYaContingencia | Rodriguez-DESAROLLADOR; Croci-DESAROLLADOR | 25h | 12.51h |
| 113 | 3.4.18 | Promocionar estado de Resultados | inactive | 1.5h? | 2015-11-07 | 2015-11-07 | 157 |  |  | 1.5d |  | AsociateYaContingencia | Rodriguez-DESAROLLADOR; Croci-DESAROLLADOR | 3h |  |
| 114 | 3.4.19 | Presentar estado de resultados |  | 11.01h? | 2015-11-01 | 2015-11-06 | 112 |  |  | 0.21d | 0d | AsociateYaContingencia | Croci-DESAROLLADOR; Rodriguez-DESAROLLADOR | 12h |  |
| 115 | 3.4.20 | Promocionar emprendimiento | inactive | 4.5h? | 2015-11-06 | 2015-11-07 | 114 |  |  | 1.04d | 0d | AsociateYaContingencia | Rodriguez-DESAROLLADOR; Croci-DESAROLLADOR | 9h |  |
| 116 | 3.4.21 | Difundir mail | inactive | 12h? | 2015-11-07 | 2015-11-09 | 115 |  |  | 1.04d |  | AsociateYaContingencia | Rodriguez-DESAROLLADOR; Croci-DESAROLLADOR | 24h |  |
| 117 | 3.5 | **Escribir script de la base de datos** |  | 1.15d? | 2015-09-13 A | 2015-10-03 A |  | 100% |  |  |  |  |  | 20h | 20h |
| 118 | 3.5.1 | Script inicial |  | 17h? | 2015-09-13 A | 2015-10-03 A | 39 | 100% |  |  |  |  | Rodriguez-DESAROLLADOR; Rodriguez-ARQUITECTO DE SOFTWARE; Tiberti-ADMINISTRADOR DE BASE DE DATOS | 20h | 20h |
| 119 | 3.5.2 | Autenticarse como usuario | inactive | 9h? | 2015-10-03 | 2015-10-11 | 118 |  |  | 1.15d | 0d |  | Tiberti-DESAROLLADOR; Rodriguez-ARQUITECTO DE SOFTWARE | 11h |  |
| 120 | 3.5.3 | Modificar Usuario | inactive | 9h? | 2015-10-11 | 2015-10-18 | 119 |  |  | 1.15d | 0d |  | Tiberti-DESAROLLADOR; Rodriguez-ARQUITECTO DE SOFTWARE | 11h |  |
| 121 | 3.5.4 | Dar de baja Usuario | inactive | 9h? | 2015-10-18 | 2015-10-31 | 120 |  |  | 1.04d |  |  | Tiberti-DESAROLLADOR; Rodriguez-ARQUITECTO DE SOFTWARE | 11h |  |
| 122 | 3.5.5 | Inscribirse como emprendedor | inactive | 9h? | 2015-11-01 | 2015-11-14 | 149 |  |  | -8.67d | 0d |  | Tiberti-DESAROLLADOR; Rodriguez-ARQUITECTO DE SOFTWARE | 11h |  |
| 123 | 3.5.6 | Aprobar inscripción como emprendedor | inactive | 9h? | 2015-11-14 | 2015-11-21 | 122 |  |  | -8.67d | 0d |  | Tiberti-DESAROLLADOR; Rodriguez-ARQUITECTO DE SOFTWARE | 11h |  |
| 124 | 3.5.7 | Aplicar para crear emprendimiento | inactive | 9h? | 2015-11-21 | 2015-11-29 | 123 |  |  | -8.67d | 0d |  | Tiberti-DESAROLLADOR; Rodriguez-ARQUITECTO DE SOFTWARE | 11h |  |
| 125 | 3.5.8 | Aprobar emprendimiento | inactive | 9h? | 2015-11-29 | 2015-12-06 | 124 |  |  | -8.67d | 0d |  | Tiberti-DESAROLLADOR; Rodriguez-ARQUITECTO DE SOFTWARE | 11h |  |
| 126 | 3.5.9 | Modificar emprendimiento | inactive | 20h? | 2015-12-06 | 2016-01-01 | 125 |  |  | -8.65d | 0d |  | Tiberti-DESAROLLADOR; Rodriguez-ARQUITECTO DE SOFTWARE | 20h |  |
| 127 | 3.5.10 | Dar de baja emprendimiento | inactive | 9h? | 2016-01-01 | 2016-01-04 | 126 |  |  | -8.54d | 0d |  | Tiberti-DESAROLLADOR; Rodriguez-ARQUITECTO DE SOFTWARE | 11h |  |
| 128 | 3.5.11 | Solicitar asociación a emprendimiento | inactive | 9h? | 2016-01-05 | 2016-01-06 | 150 |  |  | -8.44d | 0d |  | Tiberti-DESAROLLADOR; Rodriguez-ARQUITECTO DE SOFTWARE | 11h |  |
| 129 | 3.5.12 | Responder a inversor | inactive | 9h? | 2016-01-06 | 2016-01-07 | 128 |  |  | -8.23d | 0d |  | Tiberti-DESAROLLADOR; Rodriguez-ARQUITECTO DE SOFTWARE | 11h |  |
| 130 | 3.5.13 | Aceptar solicitud de asociación | inactive | 9h? | 2016-01-07 | 2016-01-08 | 129 |  |  | -8.13d | 0d |  | Tiberti-DESAROLLADOR; Rodriguez-ARQUITECTO DE SOFTWARE | 11h |  |
| 131 | 3.5.14 | Consultar información a emprendedor | inactive | 9h? | 2016-01-08 | 2016-01-11 | 130 |  |  | -8.02d | 0d |  | Tiberti-DESAROLLADOR; Rodriguez-ARQUITECTO DE SOFTWARE | 11h |  |
| 132 | 3.5.15 | Buscar/filtrar emprendimientos | inactive | 9h? | 2016-01-11 | 2016-01-12 | 131 |  |  | -7.92d | 0d |  | Tiberti-DESAROLLADOR; Rodriguez-ARQUITECTO DE SOFTWARE | 11h |  |
| 133 | 3.5.16 | Pagar | inactive | 9h? | 2016-01-12 | 2016-01-14 | 132 |  |  | -7.71d | 0d |  | Tiberti-DESAROLLADOR; Rodriguez-ARQUITECTO DE SOFTWARE | 11h |  |
| 134 | 3.5.17 | Configurar seguimiento de emprendimiento | inactive | 9h? | 2016-01-14 | 2016-01-15 | 151 |  |  | -7.6d | 0d |  | Tiberti-DESAROLLADOR; Rodriguez-ARQUITECTO DE SOFTWARE | 11h |  |
| 135 | 3.5.18 | Crear Agenda | inactive | 9h? | 2016-01-15 | 2016-01-18 | 134 |  |  | -7.4d | 0d |  | Tiberti-DESAROLLADOR; Rodriguez-ARQUITECTO DE SOFTWARE | 11h |  |
| 136 | 3.5.19 | Modificar agenda | inactive | 9h? | 2016-01-18 | 2016-01-19 | 135 |  |  | -7.29d | 0d |  | Tiberti-DESAROLLADOR; Rodriguez-ARQUITECTO DE SOFTWARE | 11h |  |
| 137 | 3.5.20 | Difundir Mail | inactive | 9h? | 2016-01-19 | 2016-01-20 | 136 |  |  | -7.19d | 0d |  | Tiberti-DESAROLLADOR; Rodriguez-ARQUITECTO DE SOFTWARE | 11h |  |

| ID | WBS | Task | Type | Duration | Start | Finish | Predecessors | Complete | Remaining | Total slack | Free slack | Constraint | Calendar | Resources | Work | Actual work |
| --- | --- | --- | --- | --- | --- | --- | --- | --- | --- | --- | --- | --- | --- | --- | --- | --- |
| 138 | 3.6 | **Revisión de pares de Plantillas** |  | 5.17d? | 2015-07-26 A | 2015-10-27 A |  | 100% |  |  |  |  |  |  | 16h | 16h |
| 139 | 3.6.1 | Revision 1 |  | 4h? | 2015-07-26 A | 2015-08-09 A | 55 | 100% |  |  |  |  |  | Tiberti-DESAROLLADOR; Rodriguez-DESAROLLADOR | 4h | 4h |
| 140 | 3.6.2 | Revision 2 |  | 4h? | 2015-09-12 A | 2015-09-26 A | 61 | 100% |  |  |  |  |  | Tiberti-DESAROLLADOR; Rodriguez-DESAROLLADOR | 4h | 4h |
| 141 | 3.6.3 | Revision 3 |  | 4h? | 2015-10-17 A | 2015-10-18 A | 67 | 100% |  |  |  |  | AsociateYaContingencia | Tiberti-DESAROLLADOR; Rodriguez-DESAROLLADOR | 4h | 4h |
| 142 | 3.6.4 | Revision 4 |  | 4h? | 2015-10-18 A | 2015-10-27 A | 70 | 100% |  |  |  |  | AsociateYaContingencia | Croci-DESAROLLADOR; Rodriguez-DESAROLLADOR | 4h | 4h |
| 143 | 3.7 | **Revisión de pares de JavaScript** | inactive | 15.69d? | 2015-08-15 | 2016-02-03 |  |  |  | -10.23d | 0d |  |  |  | 72h |  |
| 144 | 3.7.1 | Revision 1 | inactive | 20h? | 2015-08-15 | 2015-09-12 | 77 |  |  | -9d | 0d |  |  | Tiberti-DESAROLLADOR; Budic-DESAROLLADOR | 20h |  |
| 145 | 3.7.2 | Revision 2 | inactive | 20h? | 2016-01-11 | 2016-01-14 | 83 |  |  | -8.25d | 0d |  |  | Tiberti-DESAROLLADOR; Budic-DESAROLLADOR | 20h |  |
| 146 | 3.7.3 | Revision 3 | inactive | 8h? | 2016-01-28 | 2016-01-29 | 89 |  |  | -12.85d | 0d |  | AsociateYaContingencia | Tiberti-DESAROLLADOR; Budic-DESAROLLADOR | 16h |  |
| 147 | 3.7.4 | Revision 4 | inactive | 8h? | 2016-02-02 | 2016-02-03 | 93 |  |  | -12.85d | 0d |  | AsociateYaContingencia | Tiberti-DESAROLLADOR; Budic-DESAROLLADOR | 16h |  |
| 148 | 3.8 | **Revisión de pares de la base de datos** |  | 1.71d? | 2015-10-03 A | 2015-11-01 A |  | 100% |  |  |  |  |  |  | 18h | 18h |
| 149 | 3.8.1 | Revision 1 |  | 14.02h? | 2015-10-03 A | 2015-11-01 A | 118 | 100% |  |  |  |  |  | Budic-DESAROLLADOR; Croci-DESAROLLADOR | 18h | 18h |
| 150 | 3.8.2 | Revision 2 | inactive | 3h? | 2016-01-04 | 2016-01-05 | 127 |  |  | -8.44d | 0d |  |  | Budic-DESAROLLADOR; Croci-DESAROLLADOR | 6h |  |
| 151 | 3.8.3 | Revision 3 | inactive | 3h? | 2016-01-14 | 2016-01-14 | 133 |  |  | -12.63d | 0d |  | AsociateYaContingencia | Budic-DESAROLLADOR; Croci-DESAROLLADOR | 6h |  |
| 152 | 3.8.4 | Revision 4 | inactive | 3h? | 2016-01-20 | 2016-01-21 | 137 |  |  | -9.69d | 0d |  | AsociateYaContingencia | Budic-DESAROLLADOR; Croci-DESAROLLADOR | 6h |  |
| 153 | 3.9 | **Revisión de pares de PHP** |  | 7.48d? | 2015-06-27 A | 2015-11-07 |  | 81% | 1.42d? | 0.08d |  |  |  |  | 42h | 34h |
| 154 | 3.9.1 | Revision 1 |  | 5h? | 2015-06-27 A | 2015-07-04 A | 96 | 100% |  |  |  |  |  | Tiberti-DESAROLLADOR; Rodriguez-DESAROLLADOR | 10h | 10h |
| 155 | 3.9.2 | Revision 2 |  | 6h? | 2015-09-05 A | 2015-09-12 A | 102 | 100% |  |  |  |  |  | Rodriguez-DESAROLLADOR; Tiberti-DESAROLLADOR | 12h | 12h |
| 156 | 3.9.3 | Revision 3 |  | 6h? | 2015-09-26 A | 2015-09-27 A | 108 | 100% |  |  |  |  | AsociateYaContingencia | Rodriguez-DESAROLLADOR; Tiberti-DESAROLLADOR | 12h | 12h |
| 157 | 3.9.4 | Revision 4 |  | 4h? | 2015-11-06 | 2015-11-07 | 114 |  |  | 0.21d | 0d |  | AsociateYaContingencia | Rodriguez-DESAROLLADOR; Tiberti-DESAROLLADOR | 8h |  |
| 158 | 3.10 | **Promoción** |  | 1.06d | 2015-08-23 A | 2015-09-12 A |  | 100% |  |  |  |  |  |  | 28h | 28h |
| 159 | 3.10.1 | Realizar presentación comercial |  | 10h | 2015-08-30 A | 2015-09-12 A | 160 | 100% |  |  |  |  |  | Tiberti-ANALISTA FUNCIONAL; Croci-DISEÑADOR DE EXPERIENCIA DE USUARIO; Budic-PROJECT MANAGER | 20h | 20h |
| 160 | 3.10.2 | Realizar poster comercial |  | 8h | 2015-08-23 A | 2015-08-30 A | 31 | 100% |  |  |  | start no earlier than 2015-07-22 |  | Croci-DISEÑADOR DE EXPERIENCIA DE USUARIO; Budic-PROJECT MANAGER | 8h | 8h |
| 161 | 3.11 | **Legales** |  | 1.85d? | 2015-09-13 A | 2015-10-17 A |  | 100% |  |  |  |  |  |  | 92h | 92h |
| 162 | 3.11.1 | Desarrollar contrato Fideicomiso |  | 40h? | 2015-09-20 A | 2015-10-04 A | 165 | 100% |  |  |  |  |  | Tiberti-ANALISTA LEGAL | 40h | 40h |
| 163 | 3.11.2 | Desarrollar contrato de inversion |  | 12h? | 2015-10-04 A | 2015-10-10 A | 165 | 100% |  |  |  |  |  | Tiberti-ANALISTA LEGAL | 12h | 12h |
| 164 | 3.11.3 | Desarrollar términos y condiciones |  | 20h? | 2015-10-10 A | 2015-10-17 A | 162, 163 | 100% |  |  |  |  |  | Tiberti-ANALISTA LEGAL | 20h | 20h |
| 165 | 3.11.4 | Desarrollar reglas de negocio y aspectos legales |  | 20h? | 2015-09-13 A | 2015-09-20 A | 22 | 100% |  |  |  |  |  | Tiberti-ANALISTA LEGAL | 20h | 20h |

| ID | WBS | Task | Type | Duration | Start | Finish | Predecessors | Complete | Remaining | Total slack | Free slack | Calendar | Resources | Work | Actual work |
| --- | --- | --- | --- | --- | --- | --- | --- | --- | --- | --- | --- | --- | --- | --- | --- |
| 166 | 4 | **Testing** |  | 4.6d | 2015-08-29 A | 2015-11-15 |  | 59% | 1.87d | 0d |  |  |  | 72h | 41h |
| 167 | 4.1 | Armar el plan de pruebas |  | 12h | 2015-09-06 A | 2015-09-20 A | 168 | 100% |  |  |  |  | Tiberti-ANALISTA FUNCIONAL; Budic-PROJECT MANAGER | 20h | 20h |
| 168 | 4.2 | Definir los casos de prueba |  | 13.6h | 2015-08-29 A | 2015-09-06 A | 26, 30 | 100% |  |  |  |  | Tiberti-ANALISTA FUNCIONAL; Budic-PROJECT MANAGER | 16h | 16h |
| 169 | 4.3 | Ejecutar los casos de prueba |  | 20h | 2015-11-07 A | 2015-11-14 | 141, 149, 157, 156 | 25% | 15h | 0d |  | AsociateYaContingencia | Budic-TESTER; Tiberti-TESTER | 30h | 5h |
| 170 | 4.4 | Documentar resultados de las pruebas |  | 6h | 2015-11-14 | 2015-11-15 | 169 |  |  | 0d |  | AsociateYaContingencia | Budic-TESTER; Tiberti-TESTER | 6h |  |
| 171 | 5 | **Manuales** |  | 0d | 2015-04-12 | 2015-04-12 |  |  |  | 12.54d |  |  |  |  |  |
| 172 | 5.1 | Redactar manual de uso y ayuda | inactive | 2h | 2016-02-03 | 2016-02-03 | 143, 148, 168 |  |  | -12.85d | 0d | AsociateYaContingencia | Tiberti-ADMINISTRADOR DE BASE DE DATOS; Tiberti-ADMINISTRADOR DEL ENTORNO DE DESARROLLO; Tiberti-DESAROLLADOR | 6h |  |
| 173 | 6 | **Finalización del Proyecto** |  | 0.4d | 2015-11-15 | 2015-11-21 |  |  |  | 0d |  | AsociateYaContingencia |  | 26h |  |
| 174 | 6.1 | Reflexionar sobre la experiencia realizada |  | 0.5h | 2015-11-15 | 2015-11-15 | 170, 6, 12, 15, 17, 19, 21, 26, 30, 32, 34, 39, 153, 160 |  |  | 0d |  | AsociateYaContingencia | Tiberti-ADMINISTRADOR DE BASE DE DATOS; Tiberti-ADMINISTRADOR DEL ENTORNO DE DESARROLLO; Tiberti-ANALISTA FUNCIONAL; Rodriguez-ARQUITECTO DE SOFTWARE; Tiberti-DESAROLLADOR; Croci-DISEÑADOR DE EXPERIENCIA DE USUARIO; Budic-PROJECT MANAGER; Budic-TESTER | 4h |  |
| 175 | 6.2 | Analizar errores cometidos |  | 1h | 2015-11-15 | 2015-11-15 | 174 |  |  | 0d |  | AsociateYaContingencia | Tiberti-ADMINISTRADOR DE BASE DE DATOS; Tiberti-ADMINISTRADOR DEL ENTORNO DE DESARROLLO; Tiberti-ANALISTA FUNCIONAL; Rodriguez-ARQUITECTO DE SOFTWARE; Tiberti-DESAROLLADOR; Croci-DISEÑADOR DE EXPERIENCIA DE USUARIO; Budic-PROJECT MANAGER; Budic-TESTER | 8h |  |
| 176 | 6.3 | Documentación de cierre de proyecto |  | 6h | 2015-11-15 | 2015-11-19 | 175 |  |  | 0d |  | AsociateYaContingencia | Tiberti-ANALISTA FUNCIONAL; Budic-PROJECT MANAGER | 12h |  |
| 177 | 6.4 | Cerrar el proyecto |  | 2h | 2015-11-19 | 2015-11-21 | 176 |  |  | 0d |  | AsociateYaContingencia | Budic-PROJECT MANAGER | 2h |  |
